# 握爪萌物成本规划

Schedule from MS Project, 2020-03-02 to 2020-06-17, costs in ¥.
Microsoft

## Calendars

- 标准: Mon-Fri 08:00-12:00, 13:00-17:00; Sat-Sun off.

## Resources

| Resource | Group | Rate |
| --- | --- | --- |
| 黄瑞如 | 技术专家 | 110 |
| 闫文鑫 | 项目经理 | 120 |
| 吴雪瑶 | 产品经理 | 130 |
| 刘梦圆 | 测试专家 | 100 |
| 杨昕迪 | UE/UI 设计师 | 100 |
| 张彤 | 技术专家 | 110 |
| 需求专家 | 需求专家 | 90 |
| 设计专家 | 设计专家 | 80 |
| 质量专家 | 质量专家 | 80 |
| 项目经理助手 | 项目经理助手 | 80 |

## Schedule

| ID | WBS | Task | Type | Duration | Start | Finish | Predecessors | Constraint | Resources | Work | Cost |
| --- | --- | --- | --- | --- | --- | --- | --- | --- | --- | --- | --- |
| 1 | 1 | **启动** |  | 4d | 2020-03-02 | 2020-03-06 |  |  |  | 48h | 6,000 |
| 2 | 1.1 | 组件核心团队 | manual | 1d | 2020-03-02 | 2020-03-03 |  |  | 吴雪瑶 | 8h | 1,040 |
| 3 | 1.2 | 干系人分析 | manual | 1d | 2020-03-02 | 2020-03-03 |  |  | 闫文鑫 | 8h | 960 |
| 4 | 1.3 | 里程碑计划 | manual | 1d | 2020-03-03 | 2020-03-04 |  | start no earlier than 2020-03-03 | 闫文鑫 | 8h | 960 |
| 5 | 1.4 | 制定项目章程 | manual | 1d | 2020-03-04 | 2020-03-05 | 2, 3, 4 | start no earlier than 2020-03-03 | 吴雪瑶 | 8h | 1,040 |
| 6 | 1.5 | 项目启动大会 | manual | 1d | 2020-03-05 | 2020-03-06 | 5 |  | 闫文鑫; 吴雪瑶 | 16h | 2,000 |
| 7 | 2 | **规划** |  | 40d | 2020-03-06 | 2020-04-30 |  |  |  | 552h | 53,360 |
| 8 | 2.1 | **规划范围** |  | 18d | 2020-03-06 | 2020-03-31 |  |  |  | 200h | 19,440 |
| 9 | 2.1.1 | 制定需求说明书 | manual | 9d | 2020-03-06 | 2020-03-19 | 6 |  | 需求专家 | 72h | 6,480 |
| 10 | 2.1.2 | 界面设计 | manual | 5d | 2020-03-19 | 2020-03-26 | 9 |  | 杨昕迪 | 40h | 4,000 |
| 11 | 2.1.3 | 详细设计说明书 | manual | 5d | 2020-03-19 | 2020-03-26 | 9 |  | 设计专家 | 40h | 3,200 |
| 12 | 2.1.4 | 项目范围说明书 | manual | 3d | 2020-03-19 | 2020-03-24 | 9 |  | 闫文鑫 | 24h | 2,880 |
| 13 | 2.1.5 | 创建WBS | manual | 2d | 2020-03-26 | 2020-03-30 | 10, 11, 12 |  | 闫文鑫 | 16h | 1,920 |
| 14 | 2.1.6 | 形成范围基准 | manual | 1d | 2020-03-30 | 2020-03-31 | 13 |  | 闫文鑫 | 8h | 960 |
| 15 | 2.2 | **规划时间** |  | 8d | 2020-03-31 | 2020-04-09 |  |  |  | 56h | 6,720 |
| 16 | 2.2.1 | 排列工作包顺序 | manual | 1d | 2020-03-31 | 2020-04-01 | 14 |  | 闫文鑫 | 8h | 960 |
| 17 | 2.2.2 | 估计资源 | manual | 2d | 2020-04-01 | 2020-04-03 | 16 |  | 闫文鑫 | 16h | 1,920 |
| 18 | 2.2.3 | 估计持续时间 | manual | 2d | 2020-04-03 | 2020-04-07 | 17 |  | 闫文鑫 | 16h | 1,920 |
| 19 | 2.2.4 | 制定进度计划 | manual | 1d | 2020-04-07 | 2020-04-08 | 18 |  | 闫文鑫 | 8h | 960 |
| 20 | 2.2.5 | 形成进度基准 | manual | 1d | 2020-04-08 | 2020-04-09 | 19 |  | 闫文鑫 | 8h | 960 |
| 21 | 2.3 | **规划成本** |  | 7d | 2020-04-09 | 2020-04-17 |  |  |  | 48h | 5,760 |
| 22 | 2.3.1 | 项目成本估算 | manual | 3d | 2020-04-09 | 2020-04-14 | 20 |  | 闫文鑫 | 24h | 2,880 |
| 23 | 2.3.2 | 项目预算 | manual | 2d | 2020-04-14 | 2020-04-16 | 22 |  | 闫文鑫 | 16h | 1,920 |
| 24 | 2.3.3 | 形成范围基准 | manual | 1d | 2020-04-16 | 2020-04-17 | 23 |  | 闫文鑫 | 8h | 960 |

| ID | WBS | Task | Type | Duration | Start | Finish | Predecessors | Resources | Work | Cost |
| --- | --- | --- | --- | --- | --- | --- | --- | --- | --- | --- |
| 25 | 2.4 | **规划质量** |  | 9d | 2020-03-31 | 2020-04-10 |  |  | 64h | 5,120 |
| 26 | 2.4.1 | 制定测试计划 | manual | 2d | 2020-03-31 | 2020-04-02 | 14 | 质量专家 | 16h | 1,280 |
| 27 | 2.4.2 | 制定测试用例 | manual | 6d | 2020-04-02 | 2020-04-10 | 26 | 质量专家 | 48h | 3,840 |
| 28 | 2.5 | **规划人力资源** |  | 5d | 2020-04-03 | 2020-04-09 |  |  | 32h | 2,560 |
| 29 | 2.5.1 | 制定人力资源计划 | manual | 2d | 2020-04-03 | 2020-04-07 | 17 | 项目经理助手 | 16h | 1,280 |
| 30 | 2.5.2 | 制定人员配备管理计划 | manual | 2d | 2020-04-07 | 2020-04-09 | 29 | 项目经理助手 | 16h | 1,280 |
| 31 | 2.6 | **规划沟通** |  | 3d | 2020-04-09 | 2020-04-13 |  |  | 16h | 1,280 |
| 32 | 2.6.1 | 制定沟通管理计划 | manual | 2d | 2020-04-09 | 2020-04-13 | 30 | 项目经理助手 | 16h | 1,280 |
| 33 | 2.7 | **规划采购** |  | 8d | 2020-04-13 | 2020-04-22 |  |  | 56h | 4,480 |
| 34 | 2.7.1 | 自制外购分析 | manual | 2d | 2020-04-13 | 2020-04-15 | 32 | 项目经理助手 | 16h | 1,280 |
| 35 | 2.7.2 | 制定采购文件 | manual | 5d | 2020-04-15 | 2020-04-22 | 34 | 项目经理助手 | 40h | 3,200 |
| 36 | 2.8 | **规划风险** |  | 7d | 2020-04-22 | 2020-04-30 |  |  | 48h | 4,800 |
| 37 | 2.8.1 | 识别风险 | manual | 1d | 2020-04-23 | 2020-04-24 | 15, 21, 25, 28, 31, 33 | 项目经理助手; 闫文鑫 | 16h | 1,600 |
| 38 | 2.8.2 | 风险分析 | manual | 1d | 2020-04-24 | 2020-04-27 | 37 | 项目经理助手; 闫文鑫 | 16h | 1,600 |
| 39 | 2.8.3 | 制定风险登记册 | manual | 1d | 2020-04-27 | 2020-04-28 | 38 | 项目经理助手; 闫文鑫 | 16h | 1,600 |
| 40 | 2.9 | 规划整合 | manual | 2d | 2020-04-28 | 2020-04-30 | 39 | 项目经理助手; 闫文鑫 | 32h | 3,200 |
| 41 | 3 | **执行与监控** |  | 32d | 2020-04-30 | 2020-06-12 |  |  | 736h | 82,640 |
| 42 | 3.1 | 组建项目团队 | manual | 3d | 2020-04-30 | 2020-05-05 | 7 | 闫文鑫 | 24h | 2,880 |
| 43 | 3.2 | **项目执行** |  | 27d | 2020-05-05 | 2020-06-10 |  |  | 384h | 42,240 |
| 44 | 3.2.1 | **用户模块** |  | 27d | 2020-05-05 | 2020-06-10 |  |  | 200h | 22,000 |
| 45 | 3.2.1.1 | 注册登录 | manual | 3d | 2020-05-05 | 2020-05-08 | 42 | 黄瑞如 | 24h | 2,640 |
| 46 | 3.2.1.2 | 个人配置 | manual | 2d | 2020-05-11 | 2020-05-13 | 45 | 黄瑞如 | 16h | 1,760 |
| 47 | 3.2.1.3 | 设置宠物信息 | manual | 2d | 2020-05-13 | 2020-05-15 | 46 | 黄瑞如 | 16h | 1,760 |
| 48 | 3.2.1.4 | 问答 | manual | 3d | 2020-05-15 | 2020-05-20 | 47 | 黄瑞如 | 24h | 2,640 |
| 49 | 3.2.1.5 | 收藏 | manual | 2d | 2020-05-20 | 2020-05-22 | 48 | 黄瑞如 | 16h | 1,760 |
| 50 | 3.2.1.6 | 浏览商品 | manual | 2d | 2020-05-22 | 2020-05-26 | 49 | 黄瑞如 | 16h | 1,760 |
| 51 | 3.2.1.7 | 搜索商品 | manual | 2d | 2020-05-26 | 2020-05-28 | 50 | 黄瑞如 | 16h | 1,760 |
| 52 | 3.2.1.8 | 购物车 | manual | 3d | 2020-05-28 | 2020-06-02 | 51 | 黄瑞如 | 24h | 2,640 |
| 53 | 3.2.1.9 | 下单 | manual | 2d | 2020-06-02 | 2020-06-04 | 52 | 黄瑞如 | 16h | 1,760 |
| 54 | 3.2.1.10 | 浏览动态 | manual | 2d | 2020-06-04 | 2020-06-08 | 53 | 黄瑞如 | 16h | 1,760 |
| 55 | 3.2.1.11 | 发表动态 | manual | 2d | 2020-06-08 | 2020-06-10 | 54 | 黄瑞如 | 16h | 1,760 |

| ID | WBS | Task | Type | Duration | Start | Finish | Predecessors | Resources | Work | Cost |
| --- | --- | --- | --- | --- | --- | --- | --- | --- | --- | --- |
| 56 | 3.2.2 | **商家模块** |  | 12d | 2020-05-05 | 2020-05-20 |  |  | 88h | 9,680 |
| 57 | 3.2.2.1 | 注册入住 | manual | 2d | 2020-05-05 | 2020-05-07 | 42 | 张彤 | 16h | 1,760 |
| 58 | 3.2.2.2 | 商品管理 | manual | 3d | 2020-05-07 | 2020-05-12 | 57 | 张彤 | 24h | 2,640 |
| 59 | 3.2.2.3 | 订单处理 | manual | 2d | 2020-05-12 | 2020-05-14 | 58 | 张彤 | 16h | 1,760 |
| 60 | 3.2.2.4 | 统计 | manual | 2d | 2020-05-14 | 2020-05-18 | 59 | 张彤 | 16h | 1,760 |
| 61 | 3.2.2.5 | 商家配置 | manual | 2d | 2020-05-18 | 2020-05-20 | 60 | 张彤 | 16h | 1,760 |
| 62 | 3.2.3 | **宠物模块** |  | 5d | 2020-05-20 | 2020-05-26 |  |  | 32h | 3,520 |
| 63 | 3.2.3.1 | 宠物信息 | manual | 2d | 2020-05-20 | 2020-05-22 | 61 | 张彤 | 16h | 1,760 |
| 64 | 3.2.3.2 | 宠物背包 | manual | 2d | 2020-05-22 | 2020-05-26 | 63 | 张彤 | 16h | 1,760 |
| 65 | 3.2.4 | **管理员模块** |  | 9d | 2020-05-26 | 2020-06-05 |  |  | 64h | 7,040 |
| 66 | 3.2.4.1 | 商家审核 | manual | 2d | 2020-05-26 | 2020-05-28 | 64 | 张彤 | 16h | 1,760 |
| 67 | 3.2.4.2 | 促销活动 | manual | 3d | 2020-05-28 | 2020-06-02 | 66 | 张彤 | 24h | 2,640 |
| 68 | 3.2.4.3 | 统计分析 | manual | 1d | 2020-06-02 | 2020-06-03 | 67 | 张彤 | 8h | 880 |
| 69 | 3.2.4.4 | 备份 | manual | 2d | 2020-06-03 | 2020-06-05 | 68 | 张彤 | 16h | 1,760 |
| 70 | 3.3 | **项目监控** |  | 5d | 2020-05-05 | 2020-05-11 |  |  | 64h | 7,040 |
| 71 | 3.3.1 | 各项指标监控 | manual | 1d | 2020-05-05 | 2020-05-06 | 42 | 闫文鑫; 刘梦圆 | 16h | 1,760 |
| 72 | 3.3.2 | 监控评审 | manual | 1d | 2020-05-06 | 2020-05-07 | 71 | 闫文鑫; 杨昕迪 | 16h | 1,760 |
| 73 | 3.3.3 | 变更评审 | manual | 1d | 2020-05-07 | 2020-05-08 | 72 | 闫文鑫; 杨昕迪 | 16h | 1,760 |
| 74 | 3.3.4 | 例会 | manual | 1d | 2020-05-08 | 2020-05-11 | 73 | 闫文鑫; 杨昕迪 | 16h | 1,760 |
| 75 | 3.4 | **管理干系人** |  | 4d | 2020-05-11 | 2020-05-14 |  |  | 24h | 2,880 |
| 76 | 3.4.1 | 发布项目信息 | manual | 1d | 2020-05-11 | 2020-05-12 | 42 | 闫文鑫 | 8h | 960 |
| 77 | 3.4.2 | 报告监控指标 | manual | 1d | 2020-05-12 | 2020-05-13 | 42 | 闫文鑫 | 8h | 960 |
| 78 | 3.4.3 | 干系人沟通 | manual | 1d | 2020-05-13 | 2020-05-14 | 42 | 闫文鑫 | 8h | 960 |
| 79 | 3.5 | **团队建设** |  | 22d | 2020-05-14 | 2020-06-12 |  |  | 48h | 4,800 |
| 80 | 3.5.1 | 培训 | manual | 1d | 2020-05-14 | 2020-05-15 | 42 | 刘梦圆; 杨昕迪 | 16h | 1,600 |
| 81 | 3.5.2 | 娱乐活动 | manual | 1d | 2020-05-15 | 2020-05-18 | 42 | 刘梦圆; 杨昕迪 | 16h | 1,600 |
| 82 | 3.5.3 | 沟通 | manual | 1d | 2020-05-18 | 2020-05-19 | 42 | 刘梦圆; 杨昕迪 | 16h | 1,600 |
| 83 | 3.6 | 采购 | manual | 20d | 2020-05-14 | 2020-06-11 | 42 | 闫文鑫 | 160h | 19,200 |
| 84 | 3.7 | 项目验收 | manual | 1d | 2020-06-11 | 2020-06-12 | 43 | 刘梦圆; 吴雪瑶; 闫文鑫; 杨昕迪 | 32h | 3,600 |

| ID | WBS | Task | Type | Duration | Start | Finish | Predecessors | Resources | Work | Cost |
| --- | --- | --- | --- | --- | --- | --- | --- | --- | --- | --- |
| 85 | 4 | **收尾** |  | 4d | 2020-06-12 | 2020-06-17 |  |  | 64h | 6,720 |
| 86 | 4.1 | 项目终验 | manual | 1d | 2020-06-12 | 2020-06-15 | 84 | 刘梦圆; 闫文鑫; 杨昕迪; 质量专家 | 32h | 3,200 |
| 87 | 4.2 | 结束采购 | manual | 1d | 2020-06-15 | 2020-06-16 | 84 | 闫文鑫 | 8h | 960 |
| 88 | 4.3 | 项目内部收尾 | manual | 1d | 2020-06-16 | 2020-06-17 | 84 | 刘梦圆; 闫文鑫; 杨昕迪 | 24h | 2,560 |
